# 01-RefaccionariaNVW_WBS

Schedule from MS Project, 2016-05-02 to 2016-08-12, costs in $.

## Calendars

- Estándar: Mon-Fri 09:00-13:00, 15:00-19:00; Sat-Sun off.

## Resources

| Resource | Rate |
| --- | --- |
| Administrador de proyectos | 180 |
| Analista de datos | 130 |
| Diseñador | 150 |
| Programador | 120 |
| Tester | 115 |
| Asegurador de calidad | 110 |
| Administrador de configuración | 110 |
| cliente |  |

## Schedule

| ID | WBS | Task | Type | Duration | Start | Finish | Predecessors | Total slack | Free slack | Resources | Work | Cost |
| --- | --- | --- | --- | --- | --- | --- | --- | --- | --- | --- | --- | --- |
| 1 | 1 | **Plan preliminar** |  | 1.75d | 2016-05-02 09:00 | 2016-05-03 17:00 |  |  |  |  | 28h | 4,190 |
| 2 | 1.1 | Generar WBS del producto inicial |  | 4h | 2016-05-02 09:00 | 2016-05-02 13:00 |  | 0d |  | Administrador de proyectos; Analista de datos | 8h | 1,240 |
| 3 | 1.2 | Generar project charter |  | 1h | 2016-05-02 15:00 | 2016-05-02 16:00 | 2 | 0d |  | Administrador de proyectos; cliente | 2h | 180 |
| 4 | 1.3 | Plan preliminar del proyecto |  | 8h | 2016-05-02 16:00 | 2016-05-03 16:00 | 3 | 0d |  | Administrador de proyectos; Analista de datos | 16h | 2,480 |
| 5 | 1.4 | Matriz de comunicación |  | 1h | 2016-05-03 16:00 | 2016-05-03 17:00 | 4 | 0d |  | Administrador de proyectos; Administrador de configuración | 2h | 290 |
| 6 | 1.5 | Entrega de WBS del producto inicial, project charter, plan preliminar y matriz de comunicación | milestone | 0d | 2016-05-02 09:00 | 2016-05-02 09:00 |  | 1.75d |  |  |  |  |
| 7 | 2 | **Nombre del proyecto** |  | 72.25d | 2016-05-03 17:00 | 2016-08-12 09:00 | 1 | 0d |  |  | 470h | 62,945 |
| 8 | 2.1 | Formación del equipo |  | 1h | 2016-05-03 17:00 | 2016-05-03 18:00 | 5 | 0.56d | 0d | Administrador de proyectos | 1h | 180 |
| 9 | 2.2 | **Iteración 1** |  | 26.31d | 2016-05-03 18:00 | 2016-06-09 10:30 |  | 25.56d | 0d |  | 257h | 34,645 |
| 10 | 2.2.1 | **Análisis** |  | 4.69d | 2016-05-03 18:00 | 2016-05-10 15:30 |  | 25.56d | 0d |  | 66.5h | 10,195 |
| 11 | 2.2.1.1 | **Elicitación** |  | 3.12d | 2016-05-03 18:00 | 2016-05-06 19:00 |  | 25.56d | 0d |  | 48.5h | 7,555 |
| 12 | 2.2.1.1.1 | Generar lista de proveedores de requerimientos |  | 2h | 2016-05-03 18:00 | 2016-05-04 10:00 | 8 | 0.56d | 0d | Administrador de proyectos; Analista de datos | 4h | 620 |
| 13 | 2.2.1.1.2 | Evaluar los proveedores de requerimientos |  | 1h | 2016-05-04 10:00 | 2016-05-04 11:00 | 12 | 0.56d | 0d | Administrador de proyectos; Analista de datos | 2h | 310 |
| 14 | 2.2.1.1.3 | Definir estrategia de recolección de datos |  | 0.5h | 2016-05-04 11:00 | 2016-05-04 11:30 | 13 | 0.56d | 0d | Administrador de proyectos; Analista de datos | 1h | 155 |
| 15 | 2.2.1.1.4 | Planificación de reuniones de licitación |  | 1.5h | 2016-05-04 11:30 | 2016-05-04 13:00 | 14 | 0.56d | 0d | Administrador de proyectos | 1.5h | 270 |
| 16 | 2.2.1.1.5 | Identificar procesos del sistema |  | 8h | 2016-05-04 15:00 | 2016-05-05 13:00 | 15 | 0.56d | 0d | Administrador de proyectos; Analista de datos | 16h | 2,480 |
| 17 | 2.2.1.1.6 | Identificar requerimientos funcionales |  | 8h | 2016-05-05 15:00 | 2016-05-06 13:00 | 16 | 0.56d | 0d | Administrador de proyectos; Analista de datos | 16h | 2,480 |
| 18 | 2.2.1.1.7 | Identificar requerimientos no funcionales |  | 4h | 2016-05-06 15:00 | 2016-05-06 19:00 | 17 | 0.56d | 0d | Administrador de proyectos; Analista de datos | 8h | 1,240 |
| 19 | 2.2.1.2 | **Especificación** |  | 1d | 2016-05-09 09:00 | 2016-05-09 19:00 | 11 | 25.56d | 0d |  | 10h | 1,400 |
| 20 | 2.2.1.2.1 | Evaluación de requerimientos |  | 2h | 2016-05-09 09:00 | 2016-05-09 11:00 | 18 | 0.56d | 0d | Administrador de proyectos; Analista de datos | 4h | 620 |
| 21 | 2.2.1.2.2 | SRS |  | 6h | 2016-05-09 11:00 | 2016-05-09 19:00 | 20 | 0.56d | 0d | Analista de datos | 6h | 780 |
| 22 | 2.2.1.3 | **Gestión de requerimientos** |  | 0.56d | 2016-05-09 19:00 | 2016-05-10 15:30 | 19 | 25.56d |  |  | 8h | 1,240 |
| 23 | 2.2.1.3.1 | Priorizar los requerimientos |  | 2h | 2016-05-10 09:00 | 2016-05-10 11:00 | 21 | 0.56d | 0d | Administrador de proyectos; Analista de datos | 4h | 620 |
| 24 | 2.2.1.3.2 | Almacenar en repositorio |  | 0.5h | 2016-05-10 11:00 | 2016-05-10 11:30 | 23 | 0.56d | 0d | Analista de datos | 0.5h | 65 |
| 25 | 2.2.1.3.3 | Asignar a desarrolladores de software |  | 1h | 2016-05-10 11:30 | 2016-05-10 12:30 | 24 | 0.56d | 0d | Administrador de proyectos; Analista de datos | 2h | 310 |
| 26 | 2.2.1.3.4 | Administración de cambios de requerimientos |  | 0.5h | 2016-05-10 12:30 | 2016-05-10 13:00 | 25 | 0.56d | 0d | Administrador de proyectos | 0.5h | 90 |
| 27 | 2.2.1.3.5 | Administración de la trazabilidad de requerimientos |  | 0.5h | 2016-05-10 15:00 | 2016-05-10 15:30 | 26 | 0.56d | 0d | Administrador de proyectos; Analista de datos | 1h | 155 |
| 28 | 2.2.1.3.6 | Entrega de lista de proveedores de requerimientos, procesos del sistema y SRS | milestone | 0d | 2016-05-09 19:00 | 2016-05-09 19:00 |  | 1.12d |  |  |  |  |

Notes:
- 2: Descripción: Definir todas las actividades que se van a relizar en el proyecto, principio, fin, costos, recursos, etc.
- 3: Descripción: Acta de constitución del proyecto donde el cliente se compromete con la información
- 4: Descripción: Se comienza a realizar la forma en que se elaborará el proyecto
- 5: Descripción: Se establece el documento que nos ayudará a establecer la comunicación con el equipo
- 8: Descripción: Se forma el equipo de acuerdo a las habilidades de los integrantes
- 12: Descripción: Se establecen los proveedores de requerimientos, de donde obtendremos la información
- 13: Descripción: Se valoran cuales porveedores de requerimientos serán lo adecuados para nuestro proyecto
- 14: Descripción: Se define como se recolectaran los datos
- 15: Descripción: Se especifican los tiempos en que se realizaran las reuniones
- 16: Descripción: Se identifica con que procesos contará nuestro sistema
- 17: Descripción: Se identifican los requerimientos funcionales que nos servirán para la aplicación
- 18: Descripción: Se identifican los requerimientos no funcionales indispensables para nuestro sistema
- 20: Descripción: Se evalúan los requerimientos obtenidos
- 21: Descripción: Se documentan los requerimientos que se usarán
- 23: Descripción: Se jerarquizan los requerimientos viendo cuales son más importantes de cumplir
- 24: Descripción: Se respalda todo lo realizado en un repositorio para que la información se encuentre a la mano
- 25: Descripción: Se asignan encargados a las tareas
- 26: Descripción: Se comienza con el documento que gestionará los cambios que se puedan hacer a los requerimientos
- 27: Descripción: Se lleva un control de los requerimientos

| ID | WBS | Task | Type | Duration | Start | Finish | Predecessors | Total slack | Free slack | Resources | Work | Cost |
| --- | --- | --- | --- | --- | --- | --- | --- | --- | --- | --- | --- | --- |
| 29 | 2.2.2 | **Planificación** |  | 3.12d | 2016-05-10 15:30 | 2016-05-13 16:30 | 10 | 25.56d | 0d |  | 42.5h | 6,305 |
| 30 | 2.2.2.1 | Definición del ciclo de vida |  | 0.5h | 2016-05-10 15:30 | 2016-05-10 16:00 | 27 | 0.56d | 0d | Administrador de proyectos; Analista de datos | 1h | 155 |
| 31 | 2.2.2.2 | Definición de políticas |  | 0.5h | 2016-05-10 16:00 | 2016-05-10 16:30 | 30 | 0.56d | 0d | Administrador de proyectos | 0.5h | 90 |
| 32 | 2.2.2.3 | Actualizar plan de proyecto |  | 2h | 2016-05-10 16:30 | 2016-05-10 18:30 | 31 | 0.56d | 0d | Administrador de proyectos | 2h | 360 |
| 33 | 2.2.2.4 | Actualizar matriz de comunicación |  | 1h | 2016-05-10 18:30 | 2016-05-11 09:30 | 32 | 0.56d | 0d | Administrador de proyectos | 1h | 180 |
| 34 | 2.2.2.5 | **Estimación** |  | 0.75d | 2016-05-11 09:30 | 2016-05-11 17:30 |  | 25.56d | 0d |  | 7h | 960 |
| 35 | 2.2.2.5.1 | Actualizar WBS/calendario |  | 1h | 2016-05-11 09:30 | 2016-05-11 10:30 | 33 | 0.56d | 0d | Analista de datos | 1h | 130 |
| 36 | 2.2.2.5.2 | Diccionario del WBS |  | 4h | 2016-05-11 10:30 | 2016-05-11 16:30 | 35 | 0.56d | 0d | Analista de datos | 4h | 520 |
| 37 | 2.2.2.5.3 | Costos |  | 1h | 2016-05-11 16:30 | 2016-05-11 17:30 | 36 | 0.56d | 0d | Administrador de proyectos; Analista de datos | 2h | 310 |
| 38 | 2.2.2.6 | **Riesgos** |  | 1.5d | 2016-05-11 17:30 | 2016-05-13 11:30 | 34 | 25.56d | 0d |  | 24h | 3,720 |
| 39 | 2.2.2.6.1 | Identificación de riesgos |  | 6h | 2016-05-11 17:30 | 2016-05-12 15:30 | 37 | 0.56d | 0d | Administrador de proyectos; Analista de datos | 12h | 1,860 |
| 40 | 2.2.2.6.2 | Asignación de prioridades |  | 2h | 2016-05-12 15:30 | 2016-05-12 17:30 | 39 | 0.56d | 0d | Administrador de proyectos; Analista de datos | 4h | 620 |
| 41 | 2.2.2.6.3 | Plan de mitigación y contingencia |  | 4h | 2016-05-12 17:30 | 2016-05-13 11:30 | 40 | 0.56d | 0d | Administrador de proyectos; Analista de datos | 8h | 1,240 |
| 42 | 2.2.2.7 | **Aseguramiento de la calidad** |  | 0.38d | 2016-05-13 11:30 | 2016-05-13 16:30 | 38 | 25.56d |  |  | 7h | 840 |
| 43 | 2.2.2.7.1 | Plan de gestión de la configuración |  | 2h | 2016-05-13 11:30 | 2016-05-13 15:30 | 41 | 0.56d | 0d | Administrador de configuración; Asegurador de calidad | 4h | 440 |
| 44 | 2.2.2.7.2 | Junta de arranque de construcción |  | 1h | 2016-05-13 15:30 | 2016-05-13 16:30 | 43 | 0.56d | 0d | Administrador de configuración; Administrador de proyectos; Asegurador de calidad | 3h | 400 |
| 45 | 2.2.2.7.3 | Entrega de ciclo de vida a utilizar, políticas,plan del proyecto, matriz de comunicación, diccionario del WBS, riesgos, prioridades de los riesgos, plan de mitigación y contingencia, plan de gestión de la configuración y junta de arranque de construcción. | milestone | 0d | 2016-05-13 11:30 | 2016-05-13 11:30 |  | 0.94d |  |  |  |  |
| 46 | 2.2.3 | **Diseño** |  | 2.62d | 2016-05-13 16:30 | 2016-05-18 11:30 | 29 | 25.56d | 0d |  | 21h | 3,150 |
| 47 | 2.2.3.1 | Definición de la arquitectura |  | 2h | 2016-05-13 16:30 | 2016-05-13 18:30 | 44 | 0.56d | 0d | Diseñador | 2h | 300 |
| 48 | 2.2.3.2 | Diagramas de caso de uso |  | 4h | 2016-05-13 18:30 | 2016-05-16 12:30 | 47 | 0.56d | 0d | Diseñador | 4h | 600 |
| 49 | 2.2.3.3 | Diagramas de secuencia |  | 2h | 2016-05-16 12:30 | 2016-05-16 16:30 | 48 | 0.56d | 0d | Diseñador | 2h | 300 |
| 50 | 2.2.3.4 | Diagramas de clases |  | 1h | 2016-05-16 16:30 | 2016-05-16 17:30 | 49 | 0.56d | 0d | Diseñador | 1h | 150 |
| 51 | 2.2.3.5 | Diagramas de componentes |  | 1h | 2016-05-16 17:30 | 2016-05-16 18:30 | 50 | 0.56d | 0d | Diseñador | 1h | 150 |
| 52 | 2.2.3.6 | Diagramas de despliegues |  | 2h | 2016-05-16 18:30 | 2016-05-17 10:30 | 51 | 0.56d | 0d | Diseñador | 2h | 300 |
| 53 | 2.2.3.7 | Mapa de navegación |  | 1h | 2016-05-17 10:30 | 2016-05-17 11:30 | 52 | 0.56d | 0d | Diseñador | 1h | 150 |
| 54 | 2.2.3.8 | Maquetación |  | 6h | 2016-05-17 11:30 | 2016-05-18 09:30 | 53 | 0.56d | 0d | Diseñador | 6h | 900 |

Notes:
- 30: Descripción: Se define el ciclo de vida a utilizar
- 31: Descripción: Se definen las politicas que habrá dentro del ambiente laboral de la realización del proyecto
- 32: Descripción: Se actualiza el plan del proyecto
- 33: Descripción: Se comienza con la redacción de la matriz de comunicación
- 35: Descripción: Se actualiza el WBS
- 36: Descripción: Se redacta el diccionario del WBS
- 37: Descripción: Se establecen los costos que tendrá el proyecto
- 39: Descripción: Se identifican los posibles riesgos del proyecto
- 40: Descripción: Se priorizan los riesgos
- 41: Descripción: Se elabora un plan de mitigación y contingencia
- 43: Descripción: Se elabora el plan de gestión de configuración, aquí es donde comienza a interactuar el administrador de la configuración
- 44: Descripción: Se revisa que se tengan los productos necesarios para poder arrancar el sistema
- 47: Descripción: Se diseña la arquitectura de nuestra aplicación
- 48: Descripción: Se realizan los diagramas de casos de uso
- 49: Descripción: Se realizan los diagramas de secuencia
- 50: Descripción: Se realizan los diagramas de clases
- 51: Descripción: Se realizan los diagramas de componentes
- 52: Descripción: Se realizan los diagramas de despliegues
- 53: Descripción: Se realiza el mapa de navegación
- 54: Descripción: Se comienza conla maquetación de la aplicación

| ID | WBS | Task | Type | Duration | Start | Finish | Predecessors | Total slack | Free slack | Resources | Work | Cost |
| --- | --- | --- | --- | --- | --- | --- | --- | --- | --- | --- | --- | --- |
| 55 | 2.2.3.9 | **Diseño de diagramas de la base de datos** |  | 2.62d | 2016-05-13 16:30 | 2016-05-18 11:30 |  | 25.56d |  |  | 2h | 300 |
| 56 | 2.2.3.9.1 | Diagrama E-R |  | 1h | 2016-05-18 09:30 | 2016-05-18 10:30 | 54 | 0.56d | 0d | Diseñador | 1h | 150 |
| 57 | 2.2.3.9.2 | Diagrama relacional |  | 1h | 2016-05-18 10:30 | 2016-05-18 11:30 | 56 | 0.56d | 0d | Diseñador | 1h | 150 |
| 58 | 2.2.3.9.3 | Entrega de la arquitectura del sistema, casos de uso, secuencia, clases, componentes, despliegues, mapa de navegación y maquetación. | milestone | 0d | 2016-05-13 16:30 | 2016-05-13 16:30 |  | 3.19d |  |  |  |  |
| 59 | 2.2.4 | **Codificación** |  | 9.75d | 2016-05-18 11:30 | 2016-06-01 09:30 | 46 | 25.56d | 0d |  | 78h | 9,360 |
| 60 | 2.2.4.1 | Codificación de la base de datos |  | 3h | 2016-05-18 11:30 | 2016-05-18 16:30 | 57 | 0.56d | 0d | Programador | 3h | 360 |
| 61 | 2.2.4.2 | **Módulo clientes** |  | 1.56d | 2016-05-18 16:30 | 2016-05-20 11:00 |  | 25.56d | 0d |  | 12.5h | 1,500 |
| 62 | 2.2.4.2.1 | Interfaz |  | 1h | 2016-05-18 16:30 | 2016-05-18 17:30 | 60 | 0.56d | 0d | Programador | 1h | 120 |
| 63 | 2.2.4.2.2 | Clases de clientes |  | 6h | 2016-05-18 17:30 | 2016-05-19 15:30 | 62 | 0.56d | 0d | Programador | 6h | 720 |
| 64 | 2.2.4.2.3 | Conexión a BD |  | 0.5h | 2016-05-19 15:30 | 2016-05-19 16:00 | 63 | 0.56d | 0d | Programador | 0.5h | 60 |
| 65 | 2.2.4.2.4 | Alta de clientes |  | 0.5h | 2016-05-19 16:00 | 2016-05-19 16:30 | 64 | 0.56d | 0d | Programador | 0.5h | 60 |
| 66 | 2.2.4.2.5 | Baja de clientes |  | 0.5h | 2016-05-19 16:30 | 2016-05-19 17:00 | 65 | 0.56d | 0d | Programador | 0.5h | 60 |
| 67 | 2.2.4.2.6 | Actualización de clientes |  | 1h | 2016-05-19 17:00 | 2016-05-19 18:00 | 66 | 0.56d | 0d | Programador | 1h | 120 |
| 68 | 2.2.4.2.7 | Consultas de clientes |  | 1h | 2016-05-19 18:00 | 2016-05-19 19:00 | 67 | 0.56d | 0d | Programador | 1h | 120 |
| 69 | 2.2.4.2.8 | Reportes de clientes |  | 2h | 2016-05-20 09:00 | 2016-05-20 11:00 | 68 | 0.56d | 0d | Programador | 2h | 240 |
| 70 | 2.2.4.3 | **Módulo productos** |  | 2.19d | 2016-05-20 11:00 | 2016-05-24 12:30 | 61 | 25.56d | 0d |  | 17.5h | 2,100 |
| 71 | 2.2.4.3.1 | Interfaz |  | 1.5h | 2016-05-20 11:00 | 2016-05-20 12:30 | 69 | 0.56d | 0d | Programador | 1.5h | 180 |
| 72 | 2.2.4.3.2 | Clases de productos |  | 8h | 2016-05-20 12:30 | 2016-05-23 12:30 | 71 | 0.56d | 0d | Programador | 8h | 960 |
| 73 | 2.2.4.3.3 | Conexión a BD |  | 0.5h | 2016-05-23 12:30 | 2016-05-23 13:00 | 72 | 0.56d | 0d | Programador | 0.5h | 60 |
| 74 | 2.2.4.3.4 | Alta de productos |  | 1h | 2016-05-23 15:00 | 2016-05-23 16:00 | 73 | 0.56d | 0d | Programador | 1h | 120 |
| 75 | 2.2.4.3.5 | Baja de productos |  | 1h | 2016-05-23 16:00 | 2016-05-23 17:00 | 74 | 0.56d | 0d | Programador | 1h | 120 |
| 76 | 2.2.4.3.6 | Actualización de productos |  | 1.5h | 2016-05-23 17:00 | 2016-05-23 18:30 | 75 | 0.56d | 0d | Programador | 1.5h | 180 |
| 77 | 2.2.4.3.7 | Consultas de productos |  | 1.5h | 2016-05-23 18:30 | 2016-05-24 10:00 | 76 | 0.56d | 0d | Programador | 1.5h | 180 |
| 78 | 2.2.4.3.8 | Reportes de productos |  | 2.5h | 2016-05-24 10:00 | 2016-05-24 12:30 | 77 | 0.56d | 0d | Programador | 2.5h | 300 |

Notes:
- 56: Descripción: Se realiza el diseño de modelo de entidad relación
- 57: Descripción: Se realiza el modelo relacional
- 60: Descripción: Se comienza a codificar la base de datos
- 62: Descripción: Se realiza la interfaz del módulo de clientes
- 63: Descripción: Se realizan las clases de los clientes
- 64: Descripción: Se realiza la conexión a la base de datos
- 65: Descripción: Se realiza la codificación del alta de clientes
- 66: Descripción: Se realiza la codificación de la baja de clientes
- 67: Descripción: Se realiza la codificación de la actualización de la tabla clientes
- 68: Descripción: Se realizan las consultas correspondientes a la tabla clientes
- 69: Descripción: Se realiza el reporte de la tabla clientes
- 71: Descripción: Se realiza la interfaz del módulo de productos
- 72: Descripción: Se realizan las clases de los productos
- 73: Descripción: Se realiza la conexión a la base de datos
- 74: Descripción: Se realiza la codificación del alta de productos
- 75: Descripción: Se realiza la codificación de la baja de productos
- 76: Descripción: Se realiza la codificación de la actualización de la tabla productos
- 77: Descripción: Se realizan las consultas correspondientes a la tabla productos
- 78: Descripción: Se realiza el reporte de la tabla productos

| ID | WBS | Task | Duration | Start | Finish | Predecessors | Total slack | Free slack | Resources | Work | Cost |
| --- | --- | --- | --- | --- | --- | --- | --- | --- | --- | --- | --- |
| 79 | 2.2.4.4 | **Módulo ventas** | 1.56d | 2016-05-24 12:30 | 2016-05-25 19:00 | 70 | 25.56d | 0d |  | 12.5h | 1,500 |
| 80 | 2.2.4.4.1 | Interfaz | 1h | 2016-05-24 12:30 | 2016-05-24 15:30 | 78 | 0.56d | 0d | Programador | 1h | 120 |
| 81 | 2.2.4.4.2 | Clases de ventas | 6h | 2016-05-24 15:30 | 2016-05-25 11:30 | 80 | 0.56d | 0d | Programador | 6h | 720 |
| 82 | 2.2.4.4.3 | Conexión a BD | 0.5h | 2016-05-25 11:30 | 2016-05-25 12:00 | 81 | 0.56d | 0d | Programador | 0.5h | 60 |
| 83 | 2.2.4.4.4 | Alta de ventas | 0.5h | 2016-05-25 12:00 | 2016-05-25 12:30 | 82 | 0.56d | 0d | Programador | 0.5h | 60 |
| 84 | 2.2.4.4.5 | Baja de ventas | 0.5h | 2016-05-25 12:30 | 2016-05-25 13:00 | 83 | 0.56d | 0d | Programador | 0.5h | 60 |
| 85 | 2.2.4.4.6 | Actualización de ventas | 1h | 2016-05-25 15:00 | 2016-05-25 16:00 | 84 | 0.56d | 0d | Programador | 1h | 120 |
| 86 | 2.2.4.4.7 | Consultas de ventas | 1h | 2016-05-25 16:00 | 2016-05-25 17:00 | 85 | 0.56d | 0d | Programador | 1h | 120 |
| 87 | 2.2.4.4.8 | Reportes de ventas | 2h | 2016-05-25 17:00 | 2016-05-25 19:00 | 86 | 0.56d | 0d | Programador | 2h | 240 |
| 88 | 2.2.4.5 | **Módulo categoría** | 1.44d | 2016-05-26 09:00 | 2016-05-27 12:30 | 79 | 25.56d | 0d |  | 11.5h | 1,380 |
| 89 | 2.2.4.5.1 | Interfaz | 1h | 2016-05-26 09:00 | 2016-05-26 10:00 | 87 | 0.56d | 0d | Programador | 1h | 120 |
| 90 | 2.2.4.5.2 | Clases de categoría | 5h | 2016-05-26 10:00 | 2016-05-26 17:00 | 89 | 0.56d | 0d | Programador | 5h | 600 |
| 91 | 2.2.4.5.3 | Conexión a BD | 0.5h | 2016-05-26 17:00 | 2016-05-26 17:30 | 90 | 0.56d | 0d | Programador | 0.5h | 60 |
| 92 | 2.2.4.5.4 | Alta de categoría | 0.5h | 2016-05-26 17:30 | 2016-05-26 18:00 | 91 | 0.56d | 0d | Programador | 0.5h | 60 |
| 93 | 2.2.4.5.5 | Baja de categoría | 0.5h | 2016-05-26 18:00 | 2016-05-26 18:30 | 92 | 0.56d | 0d | Programador | 0.5h | 60 |
| 94 | 2.2.4.5.6 | Actualización de categoría | 1h | 2016-05-26 18:30 | 2016-05-27 09:30 | 93 | 0.56d | 0d | Programador | 1h | 120 |
| 95 | 2.2.4.5.7 | Consultas de categoría | 1h | 2016-05-27 09:30 | 2016-05-27 10:30 | 94 | 0.56d | 0d | Programador | 1h | 120 |
| 96 | 2.2.4.5.8 | Reportes de categoría | 2h | 2016-05-27 10:30 | 2016-05-27 12:30 | 95 | 0.56d | 0d | Programador | 2h | 240 |
| 97 | 2.2.4.6 | **Módulo de provedores** | 2.19d | 2016-05-27 12:30 | 2016-05-31 16:00 | 88 | 25.56d | 0d |  | 17.5h | 2,100 |
| 98 | 2.2.4.6.1 | Interfaz | 1.5h | 2016-05-27 12:30 | 2016-05-27 16:00 | 96 | 0.56d | 0d | Programador | 1.5h | 180 |
| 99 | 2.2.4.6.2 | Clases de proveedores | 8h | 2016-05-27 16:00 | 2016-05-30 16:00 | 98 | 0.56d | 0d | Programador | 8h | 960 |
| 100 | 2.2.4.6.3 | Conexión a BD | 0.5h | 2016-05-30 16:00 | 2016-05-30 16:30 | 99 | 0.56d | 0d | Programador | 0.5h | 60 |
| 101 | 2.2.4.6.4 | Alta de proveedores | 1h | 2016-05-30 16:30 | 2016-05-30 17:30 | 100 | 0.56d | 0d | Programador | 1h | 120 |
| 102 | 2.2.4.6.5 | Baja de proveedores | 1h | 2016-05-30 17:30 | 2016-05-30 18:30 | 101 | 0.56d | 0d | Programador | 1h | 120 |
| 103 | 2.2.4.6.6 | Actualización de proveedores | 1.5h | 2016-05-30 18:30 | 2016-05-31 10:00 | 102 | 0.56d | 0d | Programador | 1.5h | 180 |
| 104 | 2.2.4.6.7 | Consultas de proveedores | 1.5h | 2016-05-31 10:00 | 2016-05-31 11:30 | 103 | 0.56d | 0d | Programador | 1.5h | 180 |
| 105 | 2.2.4.6.8 | Reportes de proveedores | 2.5h | 2016-05-31 11:30 | 2016-05-31 16:00 | 104 | 0.56d | 0d | Programador | 2.5h | 300 |

Notes:
- 80: Descripción: Se realiza la interfaz del módulo de ventas
- 81: Descripción: Se realizan las clases de los ventas
- 82: Descripción: Se realiza la conexión a la base de datos
- 83: Descripción: Se realiza la codificación del alta de ventas
- 84: Descripción: Se realiza la codificación de la baja de ventas
- 85: Descripción: Se realiza la codificación de la actualización de la tabla ventas
- 86: Descripción: Se realizan las consultas correspondientes a la tabla ventas
- 87: Descripción: Se realiza el reporte de la tabla ventas
- 89: Descripción: Se realiza la interfaz del módulo de categoría
- 90: Descripción: Se realizan las clases de la tabla categoría
- 91: Descripción: Se realiza la conexión a la base de datos
- 92: Descripción: Se realiza la codificación del alta de categoría
- 93: Descripción: Se realiza la codificación de la baja de categoría
- 94: Descripción: Se realiza la codificación de la actualización de la tabla categoría
- 95: Descripción: Se realizan las consultas correspondientes a la tabla categoría
- 96: Descripción: Se realiza el reporte de la tabla categoría
- 98: Descripción: Se realiza la interfaz del módulo de proveedores
- 99: Descripción: Se realizan las clases de la tabla proveedores
- 100: Descripción: Se realiza la conexión a la base de datos
- 101: Descripción: Se realiza la codificación del alta de proveedores
- 102: Descripción: Se realiza la codificación de la baja de proveedores
- 103: Descripción: Se realiza la codificación de la actualización de la tabla proveedores
- 104: Descripción: Se realizan las consultas correspondientes a la tabla proveedores
- 105: Descripción: Se realiza el reporte de la tabla proveedores

| ID | WBS | Task | Type | Duration | Start | Finish | Predecessors | Total slack | Free slack | Resources | Work | Cost |
| --- | --- | --- | --- | --- | --- | --- | --- | --- | --- | --- | --- | --- |
| 106 | 2.2.4.7 | **Login** |  | 0.44d | 2016-05-31 16:00 | 2016-06-01 09:30 | 97 | 25.56d |  |  | 3.5h | 420 |
| 107 | 2.2.4.7.1 | Interfaz |  | 0.5h | 2016-05-31 16:00 | 2016-05-31 16:30 | 105 | 0.56d | 0d | Programador | 0.5h | 60 |
| 108 | 2.2.4.7.2 | Validación |  | 3h | 2016-05-31 16:30 | 2016-06-01 09:30 | 107 | 0.56d | 0d | Programador | 3h | 360 |
| 109 | 2.2.4.8 | Entrega de base de datos, reporte de módulo clientes, productos, ventas, categoría, proveedores y login. | milestone | 0d | 2016-05-18 11:30 | 2016-05-18 11:30 |  | 10.31d |  |  |  |  |
| 110 | 2.2.5 | **Pruebas** |  | 6.12d | 2016-06-01 09:30 | 2016-06-09 10:30 | 59 | 25.56d |  |  | 49h | 5,635 |
| 111 | 2.2.5.1 | **Pruebas de caja blanca** |  | 6.12d | 2016-06-01 09:30 | 2016-06-09 10:30 |  | 25.56d |  |  | 49h | 5,635 |
| 112 | 2.2.5.1.1 | **Módulo de clientes** |  | 1d | 2016-06-01 09:30 | 2016-06-02 09:30 |  | 25.56d | 0d |  | 8h | 920 |
| 113 | 2.2.5.1.1.1 | Puebas unitarias |  | 4h | 2016-06-01 09:30 | 2016-06-01 15:30 | 108 | 0.56d | 0d | Tester | 4h | 460 |
| 114 | 2.2.5.1.1.2 | Pruebas de módulo |  | 4h | 2016-06-01 15:30 | 2016-06-02 09:30 | 113 | 0.56d | 0d | Tester | 4h | 460 |
| 115 | 2.2.5.1.2 | **Módulo de productos** |  | 0.88d | 2016-06-02 09:30 | 2016-06-02 18:30 | 112 | 25.56d | 0d |  | 7h | 805 |
| 116 | 2.2.5.1.2.1 | Pruebas de desempeño |  | 4h | 2016-06-02 09:30 | 2016-06-02 15:30 | 114 | 0.56d | 0d | Tester | 4h | 460 |
| 117 | 2.2.5.1.2.2 | Pruebas de regresion |  | 3h | 2016-06-02 15:30 | 2016-06-02 18:30 | 116 | 0.56d | 0d | Tester | 3h | 345 |
| 118 | 2.2.5.1.3 | **Módulo ventas** |  | 0.5d | 2016-06-02 18:30 | 2016-06-03 12:30 | 115 | 25.56d | 0d |  | 4h | 460 |
| 119 | 2.2.5.1.3.1 | Pruebas de módulo |  | 4h | 2016-06-02 18:30 | 2016-06-03 12:30 | 117 | 0.56d | 0d | Tester | 4h | 460 |
| 120 | 2.2.5.1.4 | **Módulo categoría** |  | 0.5d | 2016-06-03 12:30 | 2016-06-03 18:30 | 118 | 25.56d | 0d |  | 4h | 460 |
| 121 | 2.2.5.1.4.1 | Pruebas de desempeño |  | 4h | 2016-06-03 12:30 | 2016-06-03 18:30 | 119 | 0.56d | 0d | Tester | 4h | 460 |
| 122 | 2.2.5.1.5 | **Módulo proveedores** |  | 1d | 2016-06-03 18:30 | 2016-06-06 18:30 | 120 | 25.56d | 0d |  | 8h | 920 |
| 123 | 2.2.5.1.5.1 | Pruebas unitarias |  | 4h | 2016-06-03 18:30 | 2016-06-06 12:30 | 121 | 0.56d | 0d | Tester | 4h | 460 |
| 124 | 2.2.5.1.5.2 | Pruebas de desempeño |  | 4h | 2016-06-06 12:30 | 2016-06-06 18:30 | 123 | 0.56d | 0d | Tester | 4h | 460 |
| 125 | 2.2.5.1.6 | **Login** |  | 1.25d | 2016-06-06 18:30 | 2016-06-08 10:30 | 122 | 25.56d |  |  | 10h | 1,150 |
| 126 | 2.2.5.1.6.1 | Pruebas de stress |  | 4h | 2016-06-06 18:30 | 2016-06-07 12:30 | 124 | 0.56d | 0d | Tester | 4h | 460 |
| 127 | 2.2.5.1.6.2 | Pruebas de carga |  | 6h | 2016-06-07 12:30 | 2016-06-08 10:30 | 126 | 0.56d | 0d | Tester | 6h | 690 |
| 128 | 2.2.5.1.7 | Pruebas del sistema |  | 8h | 2016-06-08 10:30 | 2016-06-09 10:30 | 127 | 0.56d | 0d | Tester | 8h | 920 |
| 129 | 2.2.5.1.8 | Entrega de resultados de pruebas de módulo de clientes, productos, ventas, categoría, proveedores y login. | milestone | 0d | 2016-06-01 09:30 | 2016-06-01 09:30 |  | 6.69d |  |  |  |  |

Notes:
- 107: Descripción: Se realiza la interfaz del login
- 108: Descripción: Se validan los campos de los formularios del login
- 113: Descripción: Se reliazan las pruebas unitarias al módulo clientes
- 114: Descripción: Se realizan las pruebas de módulo a la tabla clientes
- 116: Descripción: Se realizan las pruebas de desempeño al módulo productos
- 117: Descripción: Se realizan las pruebas de regresión al módulo productos
- 119: Descripción: Se realizan las pruebas de módulo a la tabla ventas
- 121: Descripción: Se realizan las pruebas de desempeño al módulo de categoría
- 123: Descripción: Se realizan las pruebas unitarias al módulo de proveedores
- 124: Descripción: Se realizan las pruebas de desempeño al módulo de proveedores
- 126: Descripción: Se realizan las pruebas de stress a login
- 127: Descripción: Se realizan las pruebas de carga a login
- 128: Descripción: Se realizan las pruebas de sistemas a los m{odulos anteriores en conjunto

| ID | WBS | Task | Type | Duration | Start | Finish | Predecessors | Total slack | Free slack | Resources | Work | Cost |
| --- | --- | --- | --- | --- | --- | --- | --- | --- | --- | --- | --- | --- |
| 130 | 2.3 | **Iteración 2** |  | 16.62d | 2016-06-09 10:30 | 2016-07-01 17:30 | 9 | 25.56d | 0d |  | 166h | 22,415 |
| 131 | 2.3.1 | **Análisis** |  | 3.06d | 2016-06-09 10:30 | 2016-06-14 11:00 |  | 25.56d | 0d |  | 47.5h | 7,375 |
| 132 | 2.3.1.1 | **Elicitación** |  | 3.06d | 2016-06-09 10:30 | 2016-06-14 11:00 |  | 25.56d |  |  | 47.5h | 7,375 |
| 133 | 2.3.1.1.1 | Identificar procesos del sistema |  | 6h | 2016-06-09 10:30 | 2016-06-09 18:30 | 128 | 25.56d | 0d | Administrador de proyectos; Analista de datos | 12h | 1,860 |
| 134 | 2.3.1.1.2 | Identificar requerimientos funcionales |  | 6h | 2016-06-09 18:30 | 2016-06-10 16:30 | 133 | 25.56d | 0d | Administrador de proyectos; Analista de datos | 12h | 1,860 |
| 135 | 2.3.1.1.3 | Identificar requerimientos no funcionales |  | 4h | 2016-06-10 16:30 | 2016-06-13 10:30 | 134 | 25.56d | 0d | Administrador de proyectos; Analista de datos | 8h | 1,240 |
| 136 | 2.3.1.1.4 | **Especificación** |  | 0.75d | 2016-06-13 10:30 | 2016-06-13 18:30 |  | 25.56d | 0d |  | 12h | 1,860 |
| 137 | 2.3.1.1.4.1 | Evaluación de requerimientos |  | 1h | 2016-06-13 10:30 | 2016-06-13 11:30 | 135 | 25.56d | 0d | Administrador de proyectos; Analista de datos | 2h | 310 |
| 138 | 2.3.1.1.4.2 | SRS |  | 5h | 2016-06-13 11:30 | 2016-06-13 18:30 | 137 | 25.56d | 0d | Administrador de proyectos; Analista de datos | 10h | 1,550 |
| 139 | 2.3.1.1.5 | **Gestión de requerimientos** |  | 0.31d | 2016-06-13 18:30 | 2016-06-14 11:00 | 136 | 25.56d |  |  | 3.5h | 555 |
| 140 | 2.3.1.1.5.1 | Priorizar los requerimientos |  | 1h | 2016-06-13 18:30 | 2016-06-14 09:30 | 138 | 25.56d | 0d | Administrador de proyectos; Analista de datos | 2h | 310 |
| 141 | 2.3.1.1.5.2 | Almacenar en repositorio |  | 0.5h | 2016-06-14 09:30 | 2016-06-14 10:00 | 140 | 25.56d | 0d | Analista de datos | 0.5h | 65 |
| 142 | 2.3.1.1.5.3 | Asignar a desarrolladores de software |  | 1h | 2016-06-14 10:00 | 2016-06-14 11:00 | 141 | 25.56d | 0d | Administrador de proyectos | 1h | 180 |
| 143 | 2.3.1.1.5.4 | Entrega de procesos del sistema y SRS | milestone | 0d | 2016-06-14 11:00 | 2016-06-14 11:00 | 142 | 25.56d | 0d | Analista de datos |  |  |
| 144 | 2.3.2 | **Planificación** |  | 1.5d | 2016-06-14 11:00 | 2016-06-15 17:00 | 131 | 25.56d | 0d |  | 22h | 3,320 |
| 145 | 2.3.2.1 | Actualizar plan de proyecto |  | 1h | 2016-06-14 11:00 | 2016-06-14 12:00 | 143 | 25.56d | 0d | Administrador de proyectos | 1h | 180 |
| 146 | 2.3.2.2 | **Estimación** |  | 0.38d | 2016-06-14 12:00 | 2016-06-14 17:00 |  | 25.56d | 0d |  | 4h | 570 |
| 147 | 2.3.2.2.1 | Actualizar diccionario del WBS |  | 2h | 2016-06-14 12:00 | 2016-06-14 16:00 | 145 | 25.56d | 0d | Analista de datos | 2h | 260 |
| 148 | 2.3.2.2.2 | Actualizar costos |  | 1h | 2016-06-14 16:00 | 2016-06-14 17:00 | 147 | 25.56d | 0d | Administrador de proyectos; Analista de datos | 2h | 310 |
| 149 | 2.3.2.3 | **Riesgos** |  | 0.88d | 2016-06-14 17:00 | 2016-06-15 16:00 | 146 | 25.56d | 0d |  | 14h | 2,170 |
| 150 | 2.3.2.3.1 | Identificación de nuevos riesgos |  | 4h | 2016-06-14 17:00 | 2016-06-15 11:00 | 148 | 25.56d | 0d | Administrador de proyectos; Analista de datos | 8h | 1,240 |
| 151 | 2.3.2.3.2 | Asignación de prioridades |  | 1h | 2016-06-15 11:00 | 2016-06-15 12:00 | 150 | 25.56d | 0d | Administrador de proyectos; Analista de datos | 2h | 310 |
| 152 | 2.3.2.3.3 | Plan de mitigación y contingencia |  | 2h | 2016-06-15 12:00 | 2016-06-15 16:00 | 151 | 25.56d | 0d | Administrador de proyectos; Analista de datos | 4h | 620 |
| 153 | 2.3.2.4 | **Aseguramiento de la calidad** |  | 0.12d | 2016-06-15 16:00 | 2016-06-15 17:00 | 149 | 25.56d |  |  | 3h | 400 |
| 154 | 2.3.2.4.1 | Junta de arranque de construcción |  | 1h | 2016-06-15 16:00 | 2016-06-15 17:00 | 152 | 25.56d | 0d | Administrador de configuración; Administrador de proyectos; Asegurador de calidad | 3h | 400 |
| 155 | 2.3.2.4.2 | Entrega del nuevo plan del proyecto, actualización del WBS, nuevos riesgos, prioridades de los riesgos, nuevo plan de mitigación y contingencia y junta de arranque de construcción | milestone | 0d | 2016-06-15 16:00 | 2016-06-15 16:00 |  | 25.69d |  |  |  |  |

Notes:
- 133: Descripción: Se vuelven a identificar los nuevos procesos que deberá tener el sistema
- 134: Descripción: Se identifican los nuevos requerimientos funcionales o se modifican algunos si asi se ameritá
- 135: Descripción: Se identifican los nuevos requerimientos no funcionales o se modifican algunos si asi se ameritá
- 137: Descripción: Se evalúan los nuevos requerimientos
- 138: Descripción: Se actualiza el SRS
- 140: Descripción: Se priorizan los nuevos requerimientos
- 141: Descripción: Se realiza una copia de respaldo en el repositorio
- 142: Descripción: Se asignan los nuevos encargados de las tareas
- 145: Descripción: Se actualiza el nuevo plan del proyecto
- 147: Descripción: Se actualiza el diccionario WBS
- 148: Descripción: Se actualizan los costos
- 150: Descripción: Se identifican los nuevos riegos o se actualizan los que ya se tenían
- 151: Descripción: Se asignan prioridades a los nuevos riegos
- 152: Descripción: Se realiza un nuevo plan de mitigación y contingencia
- 154: Descripción: Se revisan de nuevo los productos necesarios para arrancar el sistema

| ID | WBS | Task | Type | Duration | Start | Finish | Predecessors | Total slack | Free slack | Resources | Work | Cost |
| --- | --- | --- | --- | --- | --- | --- | --- | --- | --- | --- | --- | --- |
| 156 | 2.3.3 | **Diseño** |  | 1.38d | 2016-06-15 17:00 | 2016-06-17 10:00 | 144 | 25.56d | 0d |  | 11h | 1,650 |
| 157 | 2.3.3.1 | Diagramas de caso de uso |  | 3h | 2016-06-15 17:00 | 2016-06-16 10:00 | 154 | 25.56d | 0d | Diseñador | 3h | 450 |
| 158 | 2.3.3.2 | Diagramas de secuencia |  | 1h | 2016-06-16 10:00 | 2016-06-16 11:00 | 157 | 25.56d | 0d | Diseñador | 1h | 150 |
| 159 | 2.3.3.3 | Actualizar diagramas de componentes |  | 1h | 2016-06-16 11:00 | 2016-06-16 12:00 | 158 | 25.56d | 0d | Diseñador | 1h | 150 |
| 160 | 2.3.3.4 | Diagramas de despliegues |  | 1h | 2016-06-16 12:00 | 2016-06-16 13:00 | 159 | 25.56d | 0d | Diseñador | 1h | 150 |
| 161 | 2.3.3.5 | Mapa de navegación |  | 1h | 2016-06-16 15:00 | 2016-06-16 16:00 | 160 | 25.56d | 0d | Diseñador | 1h | 150 |
| 162 | 2.3.3.6 | Maquetación |  | 4h | 2016-06-16 16:00 | 2016-06-17 10:00 | 161 | 25.56d | 0d | Diseñador | 4h | 600 |
| 163 | 2.3.3.7 | Entrega de nuevos casos de uso, de secuencia, componentes, despliegues del mapa de navegación y de la maquetación | milestone | 0d | 2016-06-15 17:00 | 2016-06-15 17:00 |  | 26.94d |  |  |  |  |
| 164 | 2.3.4 | **Codificación** |  | 5.94d | 2016-06-17 10:00 | 2016-06-27 09:30 | 156 | 25.56d | 0d |  | 47.5h | 5,700 |
| 165 | 2.3.4.1 | **Módulo dirección** |  | 1.19d | 2016-06-17 10:00 | 2016-06-20 11:30 |  | 25.56d | 0d |  | 9.5h | 1,140 |
| 166 | 2.3.4.1.1 | Interfaz |  | 1h | 2016-06-17 10:00 | 2016-06-17 11:00 | 162 | 0.56d | 0d | Programador | 1h | 120 |
| 167 | 2.3.4.1.2 | Clases de dirección |  | 1h | 2016-06-17 11:00 | 2016-06-17 12:00 | 166 | 0.56d | 0d | Programador | 1h | 120 |
| 168 | 2.3.4.1.3 | Conexión a BD |  | 0.5h | 2016-06-17 12:00 | 2016-06-17 12:30 | 167 | 0.56d | 0d | Programador | 0.5h | 60 |
| 169 | 2.3.4.1.4 | Alta de dirección |  | 1.5h | 2016-06-17 12:30 | 2016-06-17 16:00 | 168 | 0.56d | 0d | Programador | 1.5h | 180 |
| 170 | 2.3.4.1.5 | Baja de dirección |  | 1.5h | 2016-06-17 16:00 | 2016-06-17 17:30 | 169 | 0.56d | 0d | Programador | 1.5h | 180 |
| 171 | 2.3.4.1.6 | Actualización de dirección |  | 2h | 2016-06-17 17:30 | 2016-06-20 09:30 | 170 | 0.56d | 0d | Programador | 2h | 240 |
| 172 | 2.3.4.1.7 | Consultas de dirección |  | 1h | 2016-06-20 09:30 | 2016-06-20 10:30 | 171 | 0.56d | 0d | Programador | 1h | 120 |
| 173 | 2.3.4.1.8 | Reportes de dirección |  | 1h | 2016-06-20 10:30 | 2016-06-20 11:30 | 172 | 0.56d | 0d | Programador | 1h | 120 |
| 174 | 2.3.4.2 | **Módulo deudascobrar** |  | 1.19d | 2016-06-20 11:30 | 2016-06-21 13:00 | 165 | 25.56d | 0d |  | 9.5h | 1,140 |
| 175 | 2.3.4.2.1 | Interfaz |  | 1h | 2016-06-20 11:30 | 2016-06-20 12:30 | 173 | 0.56d | 0d | Programador | 1h | 120 |
| 176 | 2.3.4.2.2 | Clases de deudascobrar |  | 1h | 2016-06-20 12:30 | 2016-06-20 15:30 | 175 | 0.56d | 0d | Programador | 1h | 120 |
| 177 | 2.3.4.2.3 | Conexión a BD |  | 0.5h | 2016-06-20 15:30 | 2016-06-20 16:00 | 176 | 0.56d | 0d | Programador | 0.5h | 60 |
| 178 | 2.3.4.2.4 | Alta de deudascobrar |  | 1.5h | 2016-06-20 16:00 | 2016-06-20 17:30 | 177 | 0.56d | 0d | Programador | 1.5h | 180 |
| 179 | 2.3.4.2.5 | Baja de deudascobrar |  | 1.5h | 2016-06-20 17:30 | 2016-06-20 19:00 | 178 | 0.56d | 0d | Programador | 1.5h | 180 |
| 180 | 2.3.4.2.6 | Actualización de deudascobrar |  | 2h | 2016-06-21 09:00 | 2016-06-21 11:00 | 179 | 0.56d | 0d | Programador | 2h | 240 |
| 181 | 2.3.4.2.7 | Consultas de deudascobrar |  | 1h | 2016-06-21 11:00 | 2016-06-21 12:00 | 180 | 0.56d | 0d | Programador | 1h | 120 |
| 182 | 2.3.4.2.8 | Reportes de deudascobrar |  | 1h | 2016-06-21 12:00 | 2016-06-21 13:00 | 181 | 0.56d | 0d | Programador | 1h | 120 |

Notes:
- 157: Descripción: Se elaboran los nuevos casos de uso
- 158: Descripción: Se elaboran los nuevos diagrmas de secuencia
- 159: Descripción: Se actualiza el diagrama de componentes
- 160: Descripción: Se elabora el neuvo diagrama de despliegues
- 161: Descripción: Se elabora el nuevo mapa de navegación
- 162: Descripción: Se realiza al nueva maquetación
- 166: Descripción: Se realiza la interfaz del módulo de dirección
- 167: Descripción: Se realizan las clases de dirección
- 168: Descripción: Se realiza la conexión a la base de datos
- 169: Descripción: Se realiza la codificación del alta de la tabla dirección
- 170: Descripción: Se realiza la codificación de la baja de dirección
- 171: Descripción: Se realiza la codificación de la actualización de la tabla dirección
- 172: Descripción: Se realizan las consultas correspondientes a la tabla dirección
- 173: Descripción: Se realiza el reporte de la tabla dirección
- 175: Descripción: Se realiza la interfaz del módulo de deudascobrar
- 176: Descripción: Se realizan las clases de los deudascobrar
- 177: Descripción: Se realiza la conexión a la base de datos
- 178: Descripción: Se realiza la codificación del alta de deudascobrar
- 179: Descripción: Se realiza la codificación de la baja de deudascobrar
- 180: Descripción: Se realiza la codificación de la actualización de la tabla deudascobrar
- 181: Descripción: Se realizan las consultas correspondientes a la tabla deudascobrar
- 182: Descripción: Se realiza el reporte de la tabla deudascobrar

| ID | WBS | Task | Type | Duration | Start | Finish | Predecessors | Total slack | Free slack | Resources | Work | Cost |
| --- | --- | --- | --- | --- | --- | --- | --- | --- | --- | --- | --- | --- |
| 183 | 2.3.4.3 | **Módulo deudaspagar** |  | 1.19d | 2016-06-21 15:00 | 2016-06-22 16:30 | 174 | 25.56d | 0d |  | 9.5h | 1,140 |
| 184 | 2.3.4.3.1 | Interfaz |  | 1h | 2016-06-21 15:00 | 2016-06-21 16:00 | 182 | 0.56d | 0d | Programador | 1h | 120 |
| 185 | 2.3.4.3.2 | Clases de deudaspagar |  | 1h | 2016-06-21 16:00 | 2016-06-21 17:00 | 184 | 0.56d | 0d | Programador | 1h | 120 |
| 186 | 2.3.4.3.3 | Conexión a BD |  | 0.5h | 2016-06-21 17:00 | 2016-06-21 17:30 | 185 | 0.56d | 0d | Programador | 0.5h | 60 |
| 187 | 2.3.4.3.4 | Alta de deudaspagar |  | 1.5h | 2016-06-21 17:30 | 2016-06-21 19:00 | 186 | 0.56d | 0d | Programador | 1.5h | 180 |
| 188 | 2.3.4.3.5 | Baja de deudaspagar |  | 1.5h | 2016-06-22 09:00 | 2016-06-22 10:30 | 187 | 0.56d | 0d | Programador | 1.5h | 180 |
| 189 | 2.3.4.3.6 | Actualización de deudaspagar |  | 2h | 2016-06-22 10:30 | 2016-06-22 12:30 | 188 | 0.56d | 0d | Programador | 2h | 240 |
| 190 | 2.3.4.3.7 | Consultas de deudaspagar |  | 1h | 2016-06-22 12:30 | 2016-06-22 15:30 | 189 | 0.56d | 0d | Programador | 1h | 120 |
| 191 | 2.3.4.3.8 | Reportes de deudaspagar |  | 1h | 2016-06-22 15:30 | 2016-06-22 16:30 | 190 | 0.56d | 0d | Programador | 1h | 120 |
| 192 | 2.3.4.4 | **Módulo abonoclientes** |  | 1.19d | 2016-06-22 16:30 | 2016-06-23 18:00 | 183 | 25.56d | 0d |  | 9.5h | 1,140 |
| 193 | 2.3.4.4.1 | Interfaz |  | 1h | 2016-06-22 16:30 | 2016-06-22 17:30 | 191 | 0.56d | 0d | Programador | 1h | 120 |
| 194 | 2.3.4.4.2 | Clases de abonoclientes |  | 1h | 2016-06-22 17:30 | 2016-06-22 18:30 | 193 | 0.56d | 0d | Programador | 1h | 120 |
| 195 | 2.3.4.4.3 | Conexión a BD |  | 0.5h | 2016-06-22 18:30 | 2016-06-22 19:00 | 194 | 0.56d | 0d | Programador | 0.5h | 60 |
| 196 | 2.3.4.4.4 | Alta de abonoclientes |  | 1.5h | 2016-06-23 09:00 | 2016-06-23 10:30 | 195 | 0.56d | 0d | Programador | 1.5h | 180 |
| 197 | 2.3.4.4.5 | Baja de abonoclientes |  | 1.5h | 2016-06-23 10:30 | 2016-06-23 12:00 | 196 | 0.56d | 0d | Programador | 1.5h | 180 |
| 198 | 2.3.4.4.6 | Actualización de abonoclientes |  | 2h | 2016-06-23 12:00 | 2016-06-23 16:00 | 197 | 0.56d | 0d | Programador | 2h | 240 |
| 199 | 2.3.4.4.7 | Consultas de abonoclientes |  | 1h | 2016-06-23 16:00 | 2016-06-23 17:00 | 198 | 0.56d | 0d | Programador | 1h | 120 |
| 200 | 2.3.4.4.8 | Reportes de abonoclientes |  | 1h | 2016-06-23 17:00 | 2016-06-23 18:00 | 199 | 0.56d | 0d | Programador | 1h | 120 |
| 201 | 2.3.4.5 | **Módulo abonoproveedores** |  | 1.19d | 2016-06-23 18:00 | 2016-06-27 09:30 | 192 | 25.56d |  |  | 9.5h | 1,140 |
| 202 | 2.3.4.5.1 | Interfaz |  | 1h | 2016-06-23 18:00 | 2016-06-23 19:00 | 200 | 0.56d | 0d | Programador | 1h | 120 |
| 203 | 2.3.4.5.2 | Clases de abonoproveedores |  | 1h | 2016-06-24 09:00 | 2016-06-24 10:00 | 202 | 0.56d | 0d | Programador | 1h | 120 |
| 204 | 2.3.4.5.3 | Conexión a BD |  | 0.5h | 2016-06-24 10:00 | 2016-06-24 10:30 | 203 | 0.56d | 0d | Programador | 0.5h | 60 |
| 205 | 2.3.4.5.4 | Alta de abonoproveedores |  | 1.5h | 2016-06-24 10:30 | 2016-06-24 12:00 | 204 | 0.56d | 0d | Programador | 1.5h | 180 |
| 206 | 2.3.4.5.5 | Baja de abonoproveedores |  | 1.5h | 2016-06-24 12:00 | 2016-06-24 15:30 | 205 | 0.56d | 0d | Programador | 1.5h | 180 |
| 207 | 2.3.4.5.6 | Actualización de abonoproveedores |  | 2h | 2016-06-24 15:30 | 2016-06-24 17:30 | 206 | 0.56d | 0d | Programador | 2h | 240 |
| 208 | 2.3.4.5.7 | Consultas de abonoproveedores |  | 1h | 2016-06-24 17:30 | 2016-06-24 18:30 | 207 | 0.56d | 0d | Programador | 1h | 120 |
| 209 | 2.3.4.5.8 | Reportes de abonoproveedores |  | 1h | 2016-06-24 18:30 | 2016-06-27 09:30 | 208 | 0.56d | 0d | Programador | 1h | 120 |
| 210 | 2.3.4.5.9 | Entrega de reporte de módulo dirección, deudaspagar, deudascobrar, abonoclientes y abonoproveedores. | milestone | 0d | 2016-06-23 18:00 | 2016-06-23 18:00 |  | 1.75d |  |  |  |  |

Notes:
- 184: Descripción: Se realiza la interfaz del módulo de deudaspagar
- 185: Descripción: Se realizan las clases de la tabla deudaspagar
- 186: Descripción: Se realiza la conexión a la base de datos
- 187: Descripción: Se realiza la codificación del alta de deudaspagar
- 188: Descripción: Se realiza la codificación de la baja de deudaspagar
- 189: Descripción: Se realiza la codificación de la actualización de la tabla deudaspagar
- 190: Descripción: Se realizan las consultas correspondientes a la tabla deudaspagar
- 191: Descripción: Se realiza el reporte de la tabla deudaspagar
- 193: Descripción: Se realiza la interfaz del módulo de abonoclientes
- 194: Descripción: Se realizan las clases de la tabla abonoclientes
- 195: Descripción: Se realiza la conexión a la base de datos
- 196: Descripción: Se realiza la codificación del alta de abonoclientes
- 197: Descripción: Se realiza la codificación de la baja de abonoclientes
- 198: Descripción: Se realiza la codificación de la actualización de la tabla abonoclientes
- 199: Descripción: Se realizan las consultas correspondientes a la tabla abonoclientes
- 200: Descripción: Se realiza el reporte de la tabla abonoclientes
- 202: Descripción: Se realiza la interfaz del módulo de abonoproveedores
- 203: Descripción: Se realizan las clases de los abonoproveedores
- 204: Descripción: Se realiza la conexión a la base de datos
- 205: Descripción: Se realiza la codificación del alta de abonoproveedores
- 206: Descripción: Se realiza la codificación de la baja de abonoproveedores
- 207: Descripción: Se realiza la codificación de la actualización de la tabla abonoproveedores
- 208: Descripción: Se realizan las consultas correspondientes a la tabla abonoproveedores
- 209: Descripción: Se realiza el reporte de la tabla abonoproveedores

| ID | WBS | Task | Type | Duration | Start | Finish | Predecessors | Total slack | Free slack | Resources | Work | Cost |
| --- | --- | --- | --- | --- | --- | --- | --- | --- | --- | --- | --- | --- |
| 211 | 2.3.5 | **Pruebas** |  | 4.75d | 2016-06-27 09:30 | 2016-07-01 17:30 | 164 | 25.56d |  |  | 38h | 4,370 |
| 212 | 2.3.5.1 | **Pruebas de caja blanca** |  | 4.75d | 2016-06-27 09:30 | 2016-07-01 17:30 |  | 25.56d |  |  | 38h | 4,370 |
| 213 | 2.3.5.1.1 | **Modulo de usuarios** |  | 1d | 2016-06-27 09:30 | 2016-06-28 09:30 |  | 25.56d | 0d |  | 8h | 920 |
| 214 | 2.3.5.1.1.1 | Puebas unitarias |  | 4h | 2016-06-27 09:30 | 2016-06-27 15:30 | 209 | 0.56d | 0d | Tester | 4h | 460 |
| 215 | 2.3.5.1.1.2 | Pruebas de modulo |  | 4h | 2016-06-27 15:30 | 2016-06-28 09:30 | 214 | 0.56d | 0d | Tester | 4h | 460 |
| 216 | 2.3.5.1.2 | **Modulo de productos** |  | 0.88d | 2016-06-28 09:30 | 2016-06-28 18:30 | 213 | 25.56d | 0d |  | 7h | 805 |
| 217 | 2.3.5.1.2.1 | Pruebas de desempeño |  | 4h | 2016-06-28 09:30 | 2016-06-28 15:30 | 215 | 0.56d | 0d | Tester | 4h | 460 |
| 218 | 2.3.5.1.2.2 | Pruebas de regresion |  | 3h | 2016-06-28 15:30 | 2016-06-28 18:30 | 217 | 0.56d | 0d | Tester | 3h | 345 |
| 219 | 2.3.5.1.3 | **Módulo deudaspagar** |  | 0.5d | 2016-06-28 18:30 | 2016-06-29 12:30 | 216 | 25.56d | 0d |  | 4h | 460 |
| 220 | 2.3.5.1.3.1 | Pruebas de módulo |  | 4h | 2016-06-28 18:30 | 2016-06-29 12:30 | 218 | 0.56d | 0d | Tester | 4h | 460 |
| 221 | 2.3.5.1.4 | **Módulo abonoclientes** |  | 0.5d | 2016-06-29 12:30 | 2016-06-29 18:30 | 219 | 25.56d | 0d |  | 4h | 460 |
| 222 | 2.3.5.1.4.1 | Pruebas de desempeño |  | 4h | 2016-06-29 12:30 | 2016-06-29 18:30 | 220 | 0.56d | 0d | Tester | 4h | 460 |
| 223 | 2.3.5.1.5 | **Módulo abonoproveedores** |  | 0.88d | 2016-06-29 18:30 | 2016-06-30 17:30 | 221 | 25.56d | 0d |  | 7h | 805 |
| 224 | 2.3.5.1.5.1 | Pruebas de stress |  | 4h | 2016-06-29 18:30 | 2016-06-30 12:30 | 222 | 0.56d | 0d | Tester | 4h | 460 |
| 225 | 2.3.5.1.5.2 | Pruebas de carga |  | 3h | 2016-06-30 12:30 | 2016-06-30 17:30 | 224 | 0.56d |  | Tester | 3h | 345 |
| 226 | 2.3.5.1.6 | Pruebas del sistema |  | 8h | 2016-06-30 17:30 | 2016-07-01 17:30 | 223 | 0.56d | 0d | Tester | 8h | 920 |
| 227 | 2.3.5.1.7 | Entrega de resultados de pruebas de módulo de dirección, deudaspagar, deudascobrar, abonoclientes y abonoproveedores. | milestone | 0d | 2016-06-27 09:30 | 2016-06-27 09:30 |  | 5.31d |  |  |  |  |
| 228 | 2.4 | **Implementación** |  | 2.62d | 2016-07-01 17:30 | 2016-07-06 12:30 | 130 | 25.56d | 0d |  | 25h | 2,980 |
| 229 | 2.4.1 | Evaluación del hosting |  | 2h | 2016-07-01 17:30 | 2016-07-04 09:30 | 226 | 0.56d | 0d | Programador | 2h | 240 |
| 230 | 2.4.2 | Implementar el sitio en el hosting |  | 8h | 2016-07-04 09:30 | 2016-07-05 09:30 | 229 | 0.56d | 0d | Programador | 8h | 960 |
| 231 | 2.4.3 | Manual de usuario |  | 5h | 2016-07-05 09:30 | 2016-07-05 16:30 | 230 | 0.56d | 0d | Programador | 5h | 600 |
| 232 | 2.4.4 | Capacitación |  | 2h | 2016-07-05 16:30 | 2016-07-05 18:30 | 231 | 0.56d | 0d | Programador | 2h | 240 |
| 233 | 2.4.5 | **Pruebas de caja blanca** |  | 2.62d | 2016-07-01 17:30 | 2016-07-06 12:30 |  | 25.56d |  |  | 8h | 940 |
| 234 | 2.4.5.1 | Pruebas de rendimiento |  | 2h | 2016-07-05 18:30 | 2016-07-06 10:30 | 232 | 0.56d | 0d | Programador; Tester | 4h | 470 |
| 235 | 2.4.5.2 | Pruebas de sistema |  | 2h | 2016-07-06 10:30 | 2016-07-06 12:30 | 234 | 0.56d | 0d | Programador; Tester | 4h | 470 |
| 236 | 2.4.5.3 | Entrega del manual de usuario | milestone | 0d | 2016-07-01 17:30 | 2016-07-01 17:30 |  | 3.19d |  | Administrador de proyectos |  |  |

Notes:
- 214: Descripción: Realización de las pruebas unitarias al módulo de usuarios
- 215: Descripción: Realización de las pruebas de módulo a la tabla usuarios
- 217: Descripción: Realización de las pruebas de desempeño al módulo productos
- 218: Descripción: Realización de las pruebas de regresión al módulo de productos
- 220: Descripción: Realización de las pruebas de módulo a la tabla deudaspagar
- 222: Descripción: Realización de las pruebas de desempeño al módulo abonoclientes
- 224: Descripción: Realización de las pruebas de stress al modulo de abonoproveedores
- 225: Descripción: Realización de las pruebas de carga al módulo de abonoproveedores
- 226: Descripción: Realización de las pruebas de sistema al los módulos anteriores en conjunto
- 229: Descripción: Se evalúa el hosting al cual se subirá la aplicación web
- 230: Descripción: Se implementa la apl.icación web en el hosting seleccionado
- 231: Descripción: Se elabora el manual de usuario
- 232: Descripción: Se otorga capacitación a la empresa cliente
- 234: Descripción: Se realizan pruebas de rendimiento a la aplicación web ye en el hosting para comprobar que todo funcione correctamente
- 235: Descripción: Se realiza las pruebas de sistema a la aplicación web para corroborar que en efecto funciona bien ya implementado en el hosting

| ID | WBS | Task | Type | Duration | Start | Finish | Predecessors | Total slack | Free slack | Constraint | Resources | Work | Cost |
| --- | --- | --- | --- | --- | --- | --- | --- | --- | --- | --- | --- | --- | --- |
| 237 | 2.5 | **Cierre del proyecto** |  | 1d | 2016-07-06 12:30 | 2016-07-07 12:30 | 228 | 25.56d |  |  |  | 21h | 2,725 |
| 238 | 2.5.1 | Carta de aceptación |  | 1h | 2016-07-06 12:30 | 2016-07-06 15:30 | 235 | 0.56d | 0d |  | Administrador de proyectos; cliente | 2h | 180 |
| 239 | 2.5.2 | Acta de cierre del proyecto |  | 1h | 2016-07-06 15:30 | 2016-07-06 16:30 | 238 | 0.56d | 0d |  | Administrador de proyectos; cliente | 2h | 180 |
| 240 | 2.5.3 | Evaluación de desempeño |  | 2h | 2016-07-06 16:30 | 2016-07-06 18:30 | 239 | 0.56d | 0d |  | Administrador de configuración; Administrador de proyectos; Asegurador de calidad | 6h | 800 |
| 241 | 2.5.4 | Junta de lecciones aprendidas |  | 1h | 2016-07-06 18:30 | 2016-07-07 09:30 | 240 | 0.56d | 0d |  | Administrador de configuración; Administrador de proyectos; Analista de datos; Asegurador de calidad; Diseñador; Programador; Tester | 7h | 915 |
| 242 | 2.5.5 | Revisión de adherencias de procesos |  | 1h | 2016-07-07 09:30 | 2016-07-07 10:30 | 241 | 0.56d | 0d |  | Administrador de proyectos; Asegurador de calidad | 2h | 290 |
| 243 | 2.5.6 | Liberación de los recursos |  | 1h | 2016-07-07 10:30 | 2016-07-07 11:30 | 242 | 0.56d | 0d |  | Administrador de proyectos | 1h | 180 |
| 244 | 2.5.7 | Informe final |  | 1h | 2016-07-07 11:30 | 2016-07-07 12:30 | 243 | 0.56d |  |  | Administrador de proyectos | 1h | 180 |
| 245 | 2.5.8 | Entrega de carta de aceptación, acta de cierre del proyecto, evaluación de desempeño, junta de lecciones aprendidas, adherencia de procesos e informe final. | milestone | 0d | 2016-07-06 12:30 | 2016-07-06 12:30 |  | 1.56d |  |  |  |  |  |
| 249 | 2.6 | **Revisión** |  | 70d | 2016-05-06 09:00 | 2016-08-12 09:00 |  | 0d |  |  |  |  |  |
| 250 | 2.6.1 | Revisión 1 | milestone, manual | 0d | 2016-05-06 09:00 | 2016-05-06 09:00 |  |  |  | start no earlier than 2016-05-06 09:00 |  |  |  |
| 251 | 2.6.2 | Revisión 2 | milestone, manual | 0d | 2016-05-13 09:00 | 2016-05-13 09:00 |  |  |  | start no earlier than 2016-05-13 09:00 |  |  |  |
| 252 | 2.6.3 | Revisión 3 | milestone, manual | 0d | 2016-05-20 09:00 | 2016-05-20 09:00 |  |  |  | start no earlier than 2016-05-20 09:00 |  |  |  |
| 253 | 2.6.4 | Revisión 4 | milestone, manual | 0d | 2016-05-27 09:00 | 2016-05-27 09:00 |  |  |  | start no earlier than 2016-05-27 09:00 |  |  |  |
| 254 | 2.6.5 | Revisión 5 | milestone, manual | 0d | 2016-06-03 09:00 | 2016-06-03 09:00 |  |  |  | start no earlier than 2016-06-03 09:00 |  |  |  |
| 255 | 2.6.6 | Revisión 6 | milestone, manual | 0d | 2016-06-10 09:00 | 2016-06-10 09:00 |  |  |  | start no earlier than 2016-06-10 09:00 |  |  |  |
| 256 | 2.6.7 | Revisión 7 | milestone, manual | 0d | 2016-06-17 09:00 | 2016-06-17 09:00 |  |  |  | start no earlier than 2016-06-17 09:00 |  |  |  |
| 257 | 2.6.8 | Revisión 8 | milestone, manual | 0d | 2016-06-24 09:00 | 2016-06-24 09:00 |  |  |  | start no earlier than 2016-06-24 09:00 |  |  |  |
| 258 | 2.6.9 | Revisión 9 | milestone, manual | 0d | 2016-07-01 09:00 | 2016-07-01 09:00 |  |  |  | start no earlier than 2016-07-01 09:00 |  |  |  |
| 259 | 2.6.10 | Revisión 10 | milestone, manual | 0d | 2016-07-08 09:00 | 2016-07-08 09:00 |  |  |  | start no earlier than 2016-07-08 09:00 |  |  |  |
| 260 | 2.6.11 | Revisión 11 | milestone, manual | 0d | 2016-07-15 09:00 | 2016-07-15 09:00 |  |  |  | start no earlier than 2016-07-15 09:00 |  |  |  |
| 261 | 2.6.12 | Revisión 12 | milestone, manual | 0d | 2016-07-22 09:00 | 2016-07-22 09:00 |  |  |  | start no earlier than 2016-07-22 09:00 |  |  |  |
| 262 | 2.6.13 | Revisión 13 | milestone, manual | 0d | 2016-07-29 09:00 | 2016-07-29 09:00 |  |  |  | start no earlier than 2016-07-29 09:00 |  |  |  |
| 263 | 2.6.14 | Revisión 14 | milestone, manual | 0d | 2016-08-05 09:00 | 2016-08-05 09:00 |  |  |  | start no earlier than 2016-08-05 09:00 |  |  |  |
| 264 | 2.6.15 | Revisión 15 | milestone, manual | 0d | 2016-08-12 09:00 | 2016-08-12 09:00 |  |  |  | start no earlier than 2016-08-12 09:00 |  |  |  |

Notes:
- 238: Descripción: Se redacta la carta de aceptación de que el cliente esta de acuerdo con el producto que se esta entregando
- 239: Descripción: Se firma el acta de que el proyecto se termino en tiempo y forma
- 240: Descripción: Se realiza una evaluación de desempeño para observar como fue realizado el proyecto
- 241: Descripción: Se retroalimenta a los integrantes del equipo sobre lo realizado en el proyecto
- 242: Descripción: Se realiza una revisión sobre como fue que funcionaron los procesos
- 243: Descripción: Se hace al liberación de los recursos utilizados en la realización del proyecto
- 244: Descripción: Se realiza el informe final sobre la realización del proyecto
